# Plan Projet Securisation de l'Architecture Reseau pour une PME

Schedule from MS Project, 2024-09-16 to 2024-10-23, 7 hours a day, costs in €.

## Calendars

- Standard: Mon-Fri 09:00-12:00, 14:00-18:00; Sat-Sun off.

## Resources

| Resource | Rate |
| --- | --- |
| Blanchard KOUBEMBA | 13 |
| Hicham Laouini | 18 |
| Laurie Carrido | 35 |
| Cynthia Caouren | 11 |

## Schedule

| ID | WBS | Task | Type | Duration | Start | Finish | Predecessors | Baseline start | Baseline finish | Baseline duration | Total slack | Resources | Work | Cost | Baseline cost |
| --- | --- | --- | --- | --- | --- | --- | --- | --- | --- | --- | --- | --- | --- | --- | --- |
| 1 | 1 | **Plan-Projet : Sécurisation de l'Architecture Réseau pour une PME** |  | 28d | 2024-09-16 | 2024-10-23 |  | 2024-09-16 | 2024-10-23 | 28d | 0d |  | 280h | 4,536 | 5,789 |
| 2 | 1.1 | **Phase 1 : Analyse du matériel existant** |  | 2d | 2024-09-16 | 2024-09-17 |  | 2024-09-16 | 2024-09-17 | 2d | 0d |  | 42h | 756 | 896 |
| 3 | 1.1.1 | Inventorier le matériel |  | 1d | 2024-09-16 | 2024-09-16 |  | 2024-09-16 | 2024-09-16 | 1d | 0d | Hicham Laouini; Blanchard KOUBEMBA; Cynthia Caouren; Laurie Carrido | 28h | 539 | 616 |
| 4 | 1.1.2 | Évaluer l’état du matériel |  | 1d | 2024-09-17 | 2024-09-17 | 3 | 2024-09-17 | 2024-09-17 | 1d | 0d | Blanchard KOUBEMBA; Hicham Laouini | 14h | 217 | 280 |
| 5 | 1.1.3 | Identifier les besoins de mise à jour | milestone | 0d | 2024-09-17 | 2024-09-17 | 4 | 2024-09-17 | 2024-09-17 | 0d | 0d | Hicham Laouini; Blanchard KOUBEMBA |  |  |  |
| 6 | 1.2 | **Phase 2 : Analyse des risques** |  | 3d | 2024-09-18 | 2024-09-20 | 2 | 2024-09-18 | 2024-09-20 | 3d | 0d |  | 42h | 756 | 896 |
| 7 | 1.2.1 | Identifier les menaces |  | 1d | 2024-09-18 | 2024-09-18 |  | 2024-09-18 | 2024-09-18 | 1d | 0d | Hicham Laouini; Blanchard KOUBEMBA; Cynthia Caouren; Laurie Carrido | 28h | 539 | 616 |
| 8 | 1.2.2 | Évaluer les vulnérabilités |  | 1d | 2024-09-19 | 2024-09-19 | 7 | 2024-09-19 | 2024-09-19 | 1d | 0d | Hicham Laouini | 7h | 126 | 126 |
| 9 | 1.2.3 | Analyser l’impact potentiel |  | 1d | 2024-09-20 | 2024-09-20 | 8 | 2024-09-20 | 2024-09-20 | 1d | 0d | Blanchard KOUBEMBA | 7h | 91 | 154 |
| 10 | 1.3 | **Phase 3 : Conception de la sécurité** |  | 4d | 2024-09-23 | 2024-09-26 | 6 | 2024-09-23 | 2024-09-26 | 4d | 0d |  | 28h | 434 | 560 |
| 11 | 1.3.1 | Développer des politiques de sécurité |  | 1d | 2024-09-23 | 2024-09-23 |  | 2024-09-23 | 2024-09-23 | 1d | 0d | Blanchard KOUBEMBA | 7h | 91 | 154 |
| 12 | 1.3.2 | Créer des procédures de sécurité |  | 2d | 2024-09-24 | 2024-09-25 | 11 | 2024-09-24 | 2024-09-25 | 2d | 0d | Hicham Laouini | 14h | 252 | 252 |
| 13 | 1.3.3 | Planifier les mesures de sécurité |  | 1d | 2024-09-26 | 2024-09-26 | 12 | 2024-09-26 | 2024-09-26 | 1d | 0d | Blanchard KOUBEMBA | 7h | 91 | 154 |
| 14 | 1.4 | **Phase 4 : Redessiner l’architecture du SI** |  | 3d | 2024-09-27 | 2024-10-01 | 10 | 2024-09-27 | 2024-10-01 | 3d | 0d |  | 14h | 182 | 308 |
| 15 | 1.4.1 | Analyser l’architecture actuelle |  | 1d | 2024-09-27 | 2024-09-27 |  | 2024-09-27 | 2024-09-27 | 1d | 0d | Blanchard KOUBEMBA | 7h | 91 | 154 |
| 16 | 1.4.2 | Identifier les recommandations de l’ANSSI | milestone | 0d | 2024-09-27 | 2024-09-27 | 15 | 2024-09-27 | 2024-09-27 | 0d | 0d | Blanchard KOUBEMBA |  |  |  |
| 17 | 1.4.3 | Concevoir la nouvelle architecture |  | 1d | 2024-09-30 | 2024-09-30 | 16 | 2024-09-30 | 2024-09-30 | 1d | 0d | Blanchard KOUBEMBA | 7h | 91 | 154 |
| 18 | 1.4.4 | Valider la conception |  | 1d | 2024-10-01 | 2024-10-01 | 17 | 2024-10-01 | 2024-10-01 | 1d | 0d |  |  |  |  |
| 19 | 1.4.5 | Mettre en œuvre la nouvelle architecture | milestone | 0d | 2024-10-01 | 2024-10-01 | 18 | 2024-10-01 | 2024-10-01 | 0d | 0d |  |  |  |  |
| 20 | 1.5 | **Phase 5 : Commande du nouveau matériel** |  | 3d | 2024-10-02 | 2024-10-04 | 14 | 2024-10-02 | 2024-10-04 | 3d | 0d |  | 28h | 371 | 462 |
| 21 | 1.5.1 | Identifier les fournisseurs |  | 1d | 2024-10-02 | 2024-10-02 |  | 2024-10-02 | 2024-10-02 | 1d | 0d | Hicham Laouini; Blanchard KOUBEMBA | 14h | 217 | 280 |
| 22 | 1.5.2 | Obtenir des devis |  | 1d | 2024-10-03 | 2024-10-03 | 21 | 2024-10-03 | 2024-10-03 | 1d | 0d | Cynthia Caouren | 7h | 77 | 91 |
| 23 | 1.5.3 | Passer les commandes |  | 1d | 2024-10-04 | 2024-10-04 | 22 | 2024-10-04 | 2024-10-04 | 1d | 0d | Cynthia Caouren | 7h | 77 | 91 |
| 24 | 1.6 | **Phase 6 : Mise en œuvre des mesures** |  | 6d | 2024-10-07 | 2024-10-14 | 20 | 2024-10-07 | 2024-10-14 | 6d | 0d |  | 56h | 798 | 1,176 |
| 25 | 1.6.1 | Installer les dispositifs de sécurité |  | 2d | 2024-10-07 | 2024-10-08 |  | 2024-10-07 | 2024-10-08 | 2d | 0d | Hicham Laouini; Blanchard KOUBEMBA | 28h | 434 | 560 |
| 26 | 1.6.2 | Configurer les dispositifs |  | 4d | 2024-10-09 | 2024-10-14 | 25 | 2024-10-09 | 2024-10-14 | 4d | 0d | Blanchard KOUBEMBA | 28h | 364 | 616 |
| 27 | 1.6.3 | Vérifier l’installation | milestone | 0d | 2024-10-14 | 2024-10-14 | 26 | 2024-10-14 | 2024-10-14 | 0d | 0d | Hicham Laouini; Blanchard KOUBEMBA |  |  |  |

| ID | WBS | Task | Duration | Start | Finish | Predecessors | Baseline start | Baseline finish | Baseline duration | Total slack | Resources | Work | Cost | Baseline cost |
| --- | --- | --- | --- | --- | --- | --- | --- | --- | --- | --- | --- | --- | --- | --- |
| 28 | 1.7 | **Phase 7 : Tests et validation** | 2d | 2024-10-15 | 2024-10-16 | 24 | 2024-10-15 | 2024-10-16 | 2d | 0d |  | 28h | 553 | 679 |
| 29 | 1.7.1 | Tester les dispositifs | 1d | 2024-10-15 | 2024-10-15 |  | 2024-10-15 | 2024-10-15 | 1d | 0d | Hicham Laouini; Blanchard KOUBEMBA; Laurie Carrido | 21h | 462 | 525 |
| 30 | 1.7.2 | Valider les résultats | 1d | 2024-10-16 | 2024-10-16 | 29 | 2024-10-16 | 2024-10-16 | 1d | 0d | Blanchard KOUBEMBA | 7h | 91 | 154 |
| 31 | 1.8 | **Phase 8 : Formation et sensibilisation** | 5d | 2024-10-17 | 2024-10-23 | 28 | 2024-10-17 | 2024-10-23 | 5d | 0d |  | 42h | 686 | 812 |
| 32 | 1.8.1 | Préparer le matériel de formation | 1d | 2024-10-17 | 2024-10-17 |  | 2024-10-17 | 2024-10-17 | 1d | 0d | Hicham Laouini; Blanchard KOUBEMBA | 14h | 217 | 280 |
| 33 | 1.8.2 | Former le personnel | 3d | 2024-10-18 | 2024-10-22 | 32 | 2024-10-18 | 2024-10-22 | 3d | 0d | Hicham Laouini | 21h | 378 | 378 |
| 34 | 1.8.3 | Sensibiliser aux bonnes pratiques | 1d | 2024-10-23 | 2024-10-23 | 33 | 2024-10-23 | 2024-10-23 | 1d | 0d | Blanchard KOUBEMBA | 7h | 91 | 154 |
